# MS Project interim 3_B1

How a schedule from MS Project changed from version to version. A marks actual dates.

## Version 1 (data date 2016-04-01, saved 2017-12-09, file MS Project interim Q1.mpp)

Note of the change: Project Management

| ID | WBS | Task | Duration | Start | Finish | Predecessors | Complete | Total float |
| --- | --- | --- | --- | --- | --- | --- | --- | --- |
| 1 | 1 | **Conveyor Belt Project** | 528d | 2016-01-04 A | 2018-01-30 |  | 12% | 0d |
| 2 | 1.1 | **Hardware** | 441d | 2016-02-05 A | 2017-10-31 |  | 14% | 2d |
| 3 |  | Start hardware development | 0d | 2016-02-05 | 2016-02-05 | 25 |  | 38d |
| 4 |  | Hardware specifications | 45d | 2016-02-09 A | 2016-04-11 | 3 | 82% | 0d |
| 5 |  | Hardware design | 70d | 2016-04-12 | 2016-07-20 | 4 |  | 0d |
| 6 |  | Hardware Documentation | 30d | 2016-07-21 | 2016-08-31 | 5 |  | 0d |
| 7 |  | Prototypes | 80d | 2016-11-11 | 2017-03-09 | 26 |  | 50d |
| 8 |  | Order circuit boards | 5d | 2017-06-26 | 2017-06-30 | 27 |  | 2d |
| 9 |  | Assemble preproduction models | 30d | 2017-09-20 | 2017-10-31 | 8FS+50d |  | 2d |
| 10 | 1.2 | **Operating system** | 441d | 2016-02-08 A | 2017-10-31 |  | 14% | 2d |
| 11 |  | Kernel specifications | 25d | 2016-02-08 A | 2016-03-11 A | 25 | 100% |  |
| 12 | 1.2.2 | **Drivers** | 300d | 2016-03-15 A | 2017-05-18 |  | 6% | 0d |
| 13 |  | Disk drivers | 100d | 2016-03-15 A | 2016-08-03 | 11 | 13% | 20d |
| 14 |  | Serial I/O drivers | 130d | 2016-11-11 | 2017-05-18 | 26 |  | 0d |
| 15 |  | Memory management | 90d | 2016-03-15 A | 2016-07-20 | 11 | 14% | 30d |
| 16 |  | Operating system documentation | 20d | 2016-03-15 A | 2016-04-11 | 11 | 65% | 100d |
| 17 |  | Network interface | 90d | 2017-06-26 | 2017-10-31 | 27 |  | 2d |
| 18 | 1.3 | **Utilities** | 422d | 2016-03-08 A | 2017-11-02 |  | 7% | 0d |
| 19 |  | Utilities specifications | 16d | 2016-03-08 A | 2016-03-29 A | 25 | 100% |  |
| 20 |  | Routine utilities | 60d | 2016-03-30 | 2016-06-22 | 19 |  | 49d |
| 21 |  | Complex utilities | 87d | 2016-03-30 A | 2016-08-01 | 19 | 2% | 22d |
| 22 |  | Utilities documentation | 20d | 2016-05-18 | 2016-06-15 | 19 |  | 54d |
| 23 |  | Shell | 60d | 2017-08-10 | 2017-11-02 | 27 |  | 0d |
| 24 | 1.4 | **System integration** | 528d | 2016-01-04 A | 2018-01-30 |  | 12% | 0d |
| 25 |  | Architectural decisions | 25d | 2016-01-04 A | 2016-02-05 A |  | 100% |  |
| 26 |  | Integration first phase | 50d | 2016-09-01 | 2016-11-10 | 13, 15, 16, 20, 21, 22, 6 |  | 0d |
| 27 |  | System hard/software test | 25d | 2017-05-19 | 2017-06-23 | 14, 7 |  | 0d |
| 28 |  | Project documentation | 50d | 2017-08-24 | 2017-11-02 | 27 |  | 0d |
| 29 |  | Integration acceptance testing | 60d | 2017-11-03 | 2018-01-30 | 17, 23, 28, 9 |  | 0d |
| 30 |  | Complete system integration | 0d | 2018-01-30 | 2018-01-30 | 29 |  | 0d |
| 31 | 1.5 | **Contingency reserves** | 0d | 2018-01-30 | 2018-01-30 |  |  | 0d |
| 32 |  | Budget Reserve | 0d | 2018-01-30 | 2018-01-30 | 30FF |  | 0d |
| 33 |  | Management Reserve | 0d | 2018-01-30 | 2018-01-30 | 30FF |  | 0d |

## Version 2 (data date 2016-07-01, saved 2017-12-09, file MS Project interim Q2.mpp)

Note of the change: Project Management

Last finish 2018-01-30 → 2018-01-25 (-5d). Complete tasks 3 → 7.

Changed:

| ID | Task | Start | Finish | Duration | Complete | Total float |
| --- | --- | --- | --- | --- | --- | --- |
| 1 | **Conveyor Belt Project** |  | 2018-01-30 → 2018-01-25 (-5d) | 528d → 525d | 12% → 40% |  |
| 2 | **Hardware** |  | 2017-10-31 → 2017-10-26 (-5d) | 441d → 438d | 14% → 39% |  |
| 3 | Start hardware development | 2016-02-05 A | 2016-02-05 A |  | 0% → 100% | 38d → none |
| 4 | Hardware specifications |  | 2016-04-11 A |  | 82% → 100% | 0d → none |
| 5 | Hardware design | 2016-04-12 A | 2016-07-20 → 2016-07-15 (-5d) | 70d → 67d | 0% → 84% |  |
| 6 | Hardware Documentation | 2016-07-21 → 2016-07-18 (-3d) | 2016-08-31 → 2016-08-26 (-5d) |  |  |  |
| 7 | Prototypes | 2016-11-11 → 2016-11-08 (-3d) | 2017-03-09 → 2017-03-06 (-3d) |  |  |  |
| 8 | Order circuit boards | 2017-06-26 → 2017-06-21 (-5d) | 2017-06-30 → 2017-06-27 (-3d) |  |  |  |
| 9 | Assemble preproduction models | 2017-09-20 → 2017-09-15 (-5d) | 2017-10-31 → 2017-10-26 (-5d) |  |  |  |
| 10 | **Operating system** |  | 2017-10-31 → 2017-10-26 (-5d) | 441d → 438d | 14% → 43% |  |
| 12 | **Drivers** |  | 2017-05-18 → 2017-05-15 (-3d) | 300d → 297d | 6% → 32% |  |
| 13 | Disk drivers |  | 2016-08-03 → 2016-08-17 (+14d) | 100d → 110d | 13% → 70% | 20d → 7d |
| 14 | Serial I/O drivers | 2016-11-11 → 2016-11-08 (-3d) | 2017-05-18 → 2017-05-15 (-3d) |  |  |  |
| 15 | Memory management |  | 2016-07-20 → 2016-07-28 (+8d) | 90d → 96d | 14% → 80% | 30d → 21d |
| 16 | Operating system documentation |  | 2016-04-11 → 2016-04-18 A (+7d) | 20d → 25d | 65% → 100% | 100d → none |
| 17 | Network interface | 2017-06-26 → 2017-06-21 (-5d) | 2017-10-31 → 2017-10-26 (-5d) |  |  |  |
| 18 | **Utilities** |  | 2017-11-02 → 2017-10-30 (-3d) | 422d → 419d | 7% → 59% |  |
| 20 | Routine utilities | 2016-03-30 → 2016-04-26 A (+27d) | 2016-06-22 → 2016-07-27 (+35d) | 60d → 65d | 0% → 72% | 49d → 22d |
| 21 | Complex utilities |  | 2016-08-01 → 2016-08-05 (+4d) | 87d → 91d | 2% → 73% | 22d → 15d |
| 22 | Utilities documentation | 2016-05-18 → 2016-05-03 A (-15d) | 2016-06-15 → 2016-06-02 A (-13d) | 20d → 22d | 0% → 100% | 54d → none |
| 23 | Shell | 2017-08-10 → 2017-08-07 (-3d) | 2017-11-02 → 2017-10-30 (-3d) |  |  |  |
| 24 | **System integration** |  | 2018-01-30 → 2018-01-25 (-5d) | 528d → 525d |  |  |
| 26 | Integration first phase | 2016-09-01 → 2016-08-29 (-3d) | 2016-11-10 → 2016-11-07 (-3d) |  |  |  |
| 27 | System hard/software test | 2017-05-19 → 2017-05-16 (-3d) | 2017-06-23 → 2017-06-20 (-3d) |  |  |  |
| 28 | Project documentation | 2017-08-24 → 2017-08-21 (-3d) | 2017-11-02 → 2017-10-30 (-3d) |  |  |  |
| 29 | Integration acceptance testing | 2017-11-03 → 2017-10-31 (-3d) | 2018-01-30 → 2018-01-25 (-5d) |  |  |  |
| 30 | Complete system integration | 2018-01-30 → 2018-01-25 (-5d) | 2018-01-30 → 2018-01-25 (-5d) |  |  |  |
| 31 | **Contingency reserves** | 2018-01-30 → 2018-01-25 (-5d) | 2018-01-30 → 2018-01-25 (-5d) |  |  |  |
| 32 | Budget Reserve | 2018-01-30 → 2018-01-25 (-5d) | 2018-01-30 → 2018-01-25 (-5d) |  |  |  |
| 33 | Management Reserve | 2018-01-30 → 2018-01-25 (-5d) | 2018-01-30 → 2018-01-25 (-5d) |  |  |  |

## Version 3 (data date 2016-10-01, saved 2017-12-11, file MS Project interim Q3.mpp)

Note of the change: Project Management

Last finish 2018-01-25 → 2018-01-23 (-2d). Complete tasks 7 → 13.

Changed:

| ID | Task | Start | Finish | Duration | Complete | Total float |
| --- | --- | --- | --- | --- | --- | --- |
| 1 | **Conveyor Belt Project** |  | 2018-01-25 → 2018-01-23 (-2d) | 525d → 523d | 40% → 54% |  |
| 2 | **Hardware** |  | 2017-10-26 → 2017-10-24 (-2d) | 438d → 436d | 39% → 55% |  |
| 5 | Hardware design | 2016-04-12 A → 2016-04-13 A (+1d) | 2016-07-15 → 2016-07-18 A (+3d) |  | 84% → 100% | 0d → none |
| 6 | Hardware Documentation | 2016-07-18 → 2016-07-19 A (+1d) | 2016-08-26 → 2016-08-24 A (-2d) | 30d → 27d | 0% → 100% | 0d → none |
| 7 | Prototypes | 2016-11-08 → 2016-11-04 (-4d) | 2017-03-06 → 2017-03-02 (-4d) |  |  |  |
| 8 | Order circuit boards | 2017-06-21 → 2017-06-19 (-2d) | 2017-06-27 → 2017-06-23 (-4d) |  |  |  |
| 9 | Assemble preproduction models | 2017-09-15 → 2017-09-13 (-2d) | 2017-10-26 → 2017-10-24 (-2d) |  |  |  |
| 10 | **Operating system** |  | 2017-10-26 → 2017-10-24 (-2d) | 438d → 436d | 43% → 54% |  |
| 12 | **Drivers** |  | 2017-05-15 → 2017-05-11 (-4d) | 297d → 295d | 32% → 46% |  |
| 13 | Disk drivers |  | 2016-08-17 A |  | 70% → 100% | 7d → none |
| 14 | Serial I/O drivers | 2016-11-08 → 2016-11-04 (-4d) | 2017-05-15 → 2017-05-11 (-4d) |  |  |  |
| 15 | Memory management |  | 2016-07-28 → 2016-08-01 A (+4d) | 96d → 98d | 80% → 100% | 21d → none |
| 17 | Network interface | 2017-06-21 → 2017-06-19 (-2d) | 2017-10-26 → 2017-10-24 (-2d) |  |  |  |
| 18 | **Utilities** |  | 2017-10-30 → 2017-10-26 (-4d) | 419d → 417d | 59% → 77% |  |
| 20 | Routine utilities |  | 2016-07-27 A |  | 72% → 100% | 22d → none |
| 21 | Complex utilities |  | 2016-08-05 → 2016-08-11 A (+6d) | 91d → 95d | 73% → 100% | 15d → none |
| 23 | Shell | 2017-08-07 → 2017-08-03 (-4d) | 2017-10-30 → 2017-10-26 (-4d) |  |  |  |
| 24 | **System integration** |  | 2018-01-25 → 2018-01-23 (-2d) | 525d → 523d | 12% → 24% |  |
| 26 | Integration first phase | 2016-08-29 → 2016-08-25 A (-4d) | 2016-11-07 → 2016-11-03 (-4d) |  | 0% → 52% |  |
| 27 | System hard/software test | 2017-05-16 → 2017-05-12 (-4d) | 2017-06-20 → 2017-06-16 (-4d) |  |  |  |
| 28 | Project documentation | 2017-08-21 → 2017-08-17 (-4d) | 2017-10-30 → 2017-10-26 (-4d) |  |  |  |
| 29 | Integration acceptance testing | 2017-10-31 → 2017-10-27 (-4d) | 2018-01-25 → 2018-01-23 (-2d) |  |  |  |
| 30 | Complete system integration | 2018-01-25 → 2018-01-23 (-2d) | 2018-01-25 → 2018-01-23 (-2d) |  |  |  |
| 31 | **Contingency reserves** | 2018-01-25 → 2018-01-23 (-2d) | 2018-01-25 → 2018-01-23 (-2d) |  |  |  |
| 32 | Budget Reserve | 2018-01-25 → 2018-01-23 (-2d) | 2018-01-25 → 2018-01-23 (-2d) |  |  |  |
| 33 | Management Reserve | 2018-01-25 → 2018-01-23 (-2d) | 2018-01-25 → 2018-01-23 (-2d) |  |  |  |

## Version 4 (data date 2017-01-01, saved 2017-12-11, file MS Project interim Q4_revised.mpp)

Note of the change: Project Management

Last finish 2018-01-23 → 2018-03-15 (+51d). Complete tasks 13 → 14.

Changed:

| ID | Task | Start | Finish | Duration | Complete | Total float | Other |
| --- | --- | --- | --- | --- | --- | --- | --- |
| 1 | **Conveyor Belt Project** |  | 2018-01-23 → 2018-03-15 (+51d) | 523d → 560d | 54% → 60% |  |  |
| 2 | **Hardware** |  | 2017-10-24 → 2017-11-17 (+24d) | 436d → 454d | 55% → 71% | 2d → 27d |  |
| 7 | Prototypes | 2016-11-04 → 2016-11-11 A (+7d) | 2017-03-02 → 2017-03-08 (+6d) | 80d → 79d | 0% → 41% | 50d → 82d | constraint none → finish no earlier than 2017-03-08 |
| 8 | Order circuit boards | 2017-06-19 → 2017-08-08 (+50d) | 2017-06-23 → 2017-08-14 (+52d) |  |  | 2d → 27d |  |
| 9 | Assemble preproduction models | 2017-09-13 → 2017-10-25 (+42d) | 2017-10-24 → 2017-11-17 (+24d) | 30d → 18d |  | 2d → 27d | constraint none → start no earlier than 2017-10-14 |
| 10 | **Operating system** |  | 2017-10-24 → 2017-12-27 (+64d) | 436d → 480d | 54% → 56% | 2d → 1d |  |
| 12 | **Drivers** |  | 2017-05-11 → 2017-06-30 (+50d) | 295d → 330d | 46% → 53% | 0d → 1d |  |
| 14 | Serial I/O drivers | 2016-11-04 → 2016-11-11 A (+7d) | 2017-05-11 → 2017-06-30 (+50d) | 130d → 160d | 0% → 20% | 0d → 1d | constraint none → finish no earlier than 2017-06-30 |
| 17 | Network interface | 2017-06-19 → 2017-08-08 (+50d) | 2017-10-24 → 2017-12-27 (+64d) | 90d → 99d |  | 2d → 1d |  |
| 18 | **Utilities** |  | 2017-10-26 → 2017-10-24 (-2d) | 417d → 415d | 77% → 78% | 0d → 45d |  |
| 23 | Shell | 2017-08-03 → 2017-08-08 (+5d) | 2017-10-26 → 2017-10-24 (-2d) | 60d → 55d |  | 0d → 45d | constraint none → start no earlier than 2017-08-08 |
| 24 | **System integration** |  | 2018-01-23 → 2018-03-15 (+51d) | 523d → 560d | 24% → 37% |  |  |
| 26 | Integration first phase |  | 2016-11-03 → 2016-11-10 A (+7d) | 50d → 55d | 52% → 100% | 0d → none |  |
| 27 | System hard/software test | 2017-05-12 → 2017-07-03 (+52d) | 2017-06-16 → 2017-08-07 (+52d) |  |  | 0d → 1d | constraint none → start no earlier than 2017-07-01 |
| 28 | Project documentation | 2017-08-17 → 2017-08-08 (-9d) | 2017-10-26 → 2017-10-24 (-2d) | 50d → 55d |  | 0d → 45d | constraint none → start no earlier than 2017-08-08 |
| 29 | Integration acceptance testing | 2017-10-27 → 2017-12-29 (+63d) | 2018-01-23 → 2018-03-15 (+51d) | 60d → 54d |  |  | constraint none → start no earlier than 2017-12-29 |
| 30 | Complete system integration | 2018-01-23 → 2018-03-15 (+51d) | 2018-01-23 → 2018-03-15 (+51d) |  |  |  |  |
| 31 | **Contingency reserves** | 2018-01-23 → 2018-03-15 (+51d) | 2018-01-23 → 2018-03-15 (+51d) |  |  |  |  |
| 32 | Budget Reserve | 2018-01-23 → 2018-03-15 (+51d) | 2018-01-23 → 2018-03-15 (+51d) |  |  |  |  |
| 33 | Management Reserve | 2018-01-23 → 2018-03-15 (+51d) | 2018-01-23 → 2018-03-15 (+51d) |  |  |  |  |
